# SDK 4.0

Schedule from MS Project, 2007-01-19 to 2007-07-24, A marks actual dates.
NCI

## Calendars

- Standard: Mon-Fri 08:00-12:00, 13:00-17:00; Sat-Sun off. Exceptions (off unless hours are given): 2007-02-05 to 2007-02-07, 2007-07-04.

## Resources

| Resource |
| --- |
| Satish |
| Dan |
| Charles |
| Avinash |
| Steve |
| Kunal |
| Doug |
| Satish/Kunal |
| Dan/Kunal |
| Ye |
| C |

## Schedule

| ID | WBS | Task | Type | Duration | Start | Finish | Predecessors | Complete | Remaining | Total slack | Free slack | Constraint | Resources | Work | Actual work |
| --- | --- | --- | --- | --- | --- | --- | --- | --- | --- | --- | --- | --- | --- | --- | --- |
| 1 | 1 | **caCORE SDK v4.0** |  | 129d? | 2007-01-19 A | 2007-07-24 |  | 13% | 112.11d? | 0d |  |  |  | 1368h | 310h |
| 2 | 1.1 | **Inception** |  | 3d | 2007-01-19 A | 2007-01-23 A |  | 100% |  |  |  |  |  | 8h | 8h |
| 3 | 1.1.1 | 4.0 Kickoff meeting | milestone | 0d | 2007-01-19 A | 2007-01-19 A |  | 100% |  |  |  | start no earlier than 2007-01-19 | Satish; Charles; Dan; Steve |  |  |
| 4 | 1.1.2 | Create initial task plan |  | 1d | 2007-01-23 A | 2007-01-23 A |  | 100% |  |  |  |  | Satish | 8h | 8h |
| 5 | 1.2 | **Eloboration** |  | 13d | 2007-01-23 A | 2007-02-13 |  | 71% | 3.82d | 114d |  |  |  | 246h | 190h |
| 6 | 1.2.1 | **Requiements meetings** |  | 6.25d | 2007-01-23 A | 2007-01-31 A |  | 100% |  |  |  |  |  | 78h | 78h |
| 7 | 1.2.1.1 | Requirements meeting (CGEMS, Rambrandt) |  | 0.25d | 2007-01-29 A | 2007-01-29 A |  | 100% |  |  |  | start no earlier than 2007-01-29 | Satish; Dan; Steve | 6h | 6h |
| 8 | 1.2.1.2 | Requirements Meeting (caCORE API) |  | 0.25d | 2007-01-23 A | 2007-01-23 A |  | 100% |  |  |  |  | Satish; Dan; Steve | 6h | 6h |
| 9 | 1.2.1.3 | Requirements meeting (caAdapter) |  | 0.25d | 2007-01-30 A | 2007-01-30 A |  | 100% |  |  |  | start no earlier than 2007-01-30 | Satish; Dan; Steve | 6h | 6h |
| 10 | 1.2.1.4 | Requirements meeting (caDSR) |  | 0.25d | 2007-01-30 A | 2007-01-30 A |  | 100% |  |  |  | start no earlier than 2007-01-30 | Satish; Dan; Steve | 6h | 6h |
| 11 | 1.2.1.5 | Requirements meeting (caGRID) |  | 0.25d | 2007-01-31 A | 2007-01-31 A |  | 100% |  |  |  | start no earlier than 2007-01-31 | Satish; Dan; Steve | 6h | 6h |
| 12 | 1.2.1.6 | Requirements meeting (other teams) |  | 2d | 2007-01-29 A | 2007-01-30 A |  | 100% |  |  |  | start no earlier than 2007-01-29 | Satish; Dan; Steve | 48h | 48h |
| 13 | 1.2.2 | **Scope Document** |  | 10d | 2007-01-26 A | 2007-02-13 |  | 53% | 4.7d | 114d |  |  |  | 88h | 46.4h |
| 14 | 1.2.2.1 | Prepare list of scope items on gforge |  | 1d | 2007-01-26 A | 2007-01-26 |  | 80% | 0.2d | 44.35d | 0d | start no earlier than 2007-01-26 | Satish | 8h | 6.4h |
| 15 | 1.2.2.2 | Draft scope document |  | 3d | 2007-01-29 A | 2007-01-31 A | 14 | 100% |  |  |  |  | Charles | 24h | 24h |
| 16 | 1.2.2.3 | Estimate LOE for Iteration 1 - 3 scope items |  | 1d | 2007-02-01 A | 2007-02-01 A | 15 | 100% |  |  |  |  | Satish | 8h | 8h |
| 17 | 1.2.2.4 | Prepare risk list |  | 1d | 2007-02-02 A | 2007-02-02 | 16 | 50% | 0.5d | 110d | 0d |  | Charles; Satish | 16h | 8h |
| 18 | 1.2.2.5 | NCICB Review of scope document |  | 3d | 2007-02-08 | 2007-02-12 | 17 |  |  | 44d | 0d |  | Avinash | 24h |  |
| 19 | 1.2.2.6 | Revise scope document |  | 1d | 2007-02-13 | 2007-02-13 | 18 |  |  | 44d |  |  | Charles | 8h |  |
| 20 | 1.2.3 | **QA Actvities** |  | 7d | 2007-01-23 A | 2007-01-31 |  | 80% | 1.4d | 120d |  |  |  | 72h | 57.6h |
| 21 | 1.2.3.1 | Setup QA repository | milestone | 0d | 2007-01-23 A | 2007-01-23 A |  | 100% |  |  |  |  | Steve |  |  |
| 22 | 1.2.3.2 | Modify Unit test cases and data |  | 5d | 2007-01-23 A | 2007-01-29 | 21 | 80% | 1d | 121.6d | 0d |  | Steve | 40h | 32h |
| 23 | 1.2.3.3 | Validate test case |  | 2d | 2007-01-30 A | 2007-01-31 | 22 | 80% | 0.4d | 120d |  |  | Steve; Satish | 32h | 25.6h |
| 24 | 1.2.4 | Revise task plan |  | 0.5d | 2007-01-23 A | 2007-01-23 A |  | 100% |  |  |  |  | Charles; Satish | 8h | 8h |

| ID | WBS | Task | Duration | Start | Finish | Predecessors | Complete | Remaining | Total slack | Free slack | Constraint | Resources | Work | Actual work |
| --- | --- | --- | --- | --- | --- | --- | --- | --- | --- | --- | --- | --- | --- | --- |
| 25 | 1.3 | **Construction** | 122d? | 2007-01-23 A | 2007-07-17 |  | 8% | 112.5d? | 5d |  |  |  | 1114h | 112h |
| 26 | 1.3.1 | **Iteration 1** | 32d | 2007-01-23 A | 2007-03-12 |  | 22% | 25.03d | 95d |  |  |  | 558h | 112h |
| 27 | 1.3.1.1 | **SDK 3.2.1 Release** | 14d | 2007-01-23 A | 2007-02-14 A |  | 100% |  |  |  |  |  | 112h | 112h |
| 28 | 1.3.1.1.1 | Integrate new UI | 14d | 2007-01-23 A | 2007-02-14 A |  | 100% |  |  |  |  | Dan | 112h | 112h |
| 29 | 1.3.1.2 | **QA** | 3d | 2007-02-15 | 2007-02-19 |  |  |  | 103d |  |  |  | 24h |  |
| 30 | 1.3.1.2.1 | Test new UI | 3d | 2007-02-15 | 2007-02-19 | 28 |  |  | 103d | 0d |  | Steve | 24h |  |
| 31 | 1.3.1.3 | **caGrid Integration** | 21d | 2007-02-12 | 2007-03-12 |  |  |  | 4.5d |  |  |  | 422h |  |
| 32 | 1.3.1.3.1 | **Support multiple ApplicationService in same JVM** | 13d | 2007-02-12 | 2007-02-28 |  |  |  | 4.5d |  |  |  | 92h |  |
| 33 | 1.3.1.3.1.1 | Design | 3d | 2007-02-12 | 2007-02-14 |  |  |  | 4.5d | 0d | start no earlier than 2007-02-12 | Satish | 24h |  |
| 34 | 1.3.1.3.1.2 | Design Review | 0.5d | 2007-02-20 | 2007-02-20 | 38 |  |  | 4.5d | 0d |  | Satish; Kunal; Doug; Avinash | 16h |  |
| 35 | 1.3.1.3.1.3 | Design Update | 0.5d | 2007-02-20 | 2007-02-20 | 34 |  |  | 4.5d | 0d |  | Satish/Kunal | 4h |  |
| 36 | 1.3.1.3.1.4 | Development/Unit Test | 6d | 2007-02-21 | 2007-02-28 | 35 |  |  | 4.5d | 0d |  | Satish | 48h |  |
| 37 | 1.3.1.3.2 | **Support multiple concurrent users on the same ApplicationService** | 13d | 2007-02-15 | 2007-03-05 |  |  |  | 4.5d |  |  |  | 48h |  |
| 38 | 1.3.1.3.2.1 | Design | 3d | 2007-02-15 | 2007-02-19 | 33 |  |  | 4.5d | 0d |  | Satish/Kunal | 24h |  |
| 39 | 1.3.1.3.2.2 | Development | 3d | 2007-03-01 | 2007-03-05 | 36 |  |  | 4.5d | 0d |  | Satish | 24h |  |
| 40 | 1.3.1.3.3 | Castor related work was performed on SDK 3.1 branch move to SDK 3.2 | 3d | 2007-02-15 | 2007-02-19 | 28 |  |  | 28.25d | 0d |  | Dan | 24h |  |
| 41 | 1.3.1.3.4 | Castor mapping for inheritance defect (GF#4031) | 0.25d | 2007-02-20 | 2007-02-20 | 40 |  |  | 28.25d | 0d |  | Dan | 2h |  |
| 42 | 1.3.1.3.5 | Improved CSM Installation with SDK | 1d | 2007-02-20 | 2007-02-21 | 41 |  |  | 28.25d | 0d |  | Dan | 8h |  |
| 43 | 1.3.1.3.6 | **Performance due to unnecessary nested sub-selects** | 6d | 2007-02-21 | 2007-03-01 |  |  |  | 28.25d |  |  |  | 48h |  |
| 44 | 1.3.1.3.6.1 | Analysis/Development | 6d | 2007-02-21 | 2007-03-01 | 42 |  |  | 28.25d | 0d |  | Dan | 48h |  |
| 45 | 1.3.1.3.7 | **QA** | 15d | 2007-02-20 | 2007-03-12 |  |  |  | 14.5d |  |  |  | 120h |  |
| 46 | 1.3.1.3.7.1 | Test Development | 7d | 2007-02-20 | 2007-02-28 | 30 |  |  | 103d |  | start no earlier than 2007-02-14 | Steve | 56h |  |
| 47 | 1.3.1.3.7.2 | Test Execution | 5d | 2007-03-06 | 2007-03-12 | 39, 44 |  |  | 95d |  |  | Steve | 40h |  |
| 48 | 1.3.1.3.7.3 | Test Support | 3d | 2007-03-06 | 2007-03-08 | 39 |  |  | 4.5d | 0d |  | Satish | 24h |  |

| ID | WBS | Task | Type | Duration | Start | Finish | Predecessors | Total slack | Free slack | Constraint | Resources | Work |
| --- | --- | --- | --- | --- | --- | --- | --- | --- | --- | --- | --- | --- |
| 49 | 1.3.1.3.8 | **Documentation** |  | 2d | 2007-03-01 | 2007-03-05 |  | 28.25d | 0d |  |  | 16h |
| 50 | 1.3.1.3.8.1 | Update Programmers Guide, Release Notes |  | 1d | 2007-03-01 | 2007-03-02 | 44 | 28.25d | 0d |  | Dan | 8h |
| 51 | 1.3.1.3.8.2 | Review |  | 0.5d | 2007-03-02 | 2007-03-02 | 50 | 28.25d | 0d |  | Dan | 4h |
| 52 | 1.3.1.3.8.3 | Final |  | 0.5d | 2007-03-02 | 2007-03-05 | 51 | 28.25d | 0d |  | Dan | 4h |
| 53 | 1.3.1.3.9 | Release Packaging |  | 2d | 2007-03-05 | 2007-03-07 | 52 | 98.75d |  |  | Dan | 16h |
| 54 | 1.3.1.3.10 | **Iteration Plan** |  | 2d | 2007-03-02 | 2007-03-06 | 50 | 99.75d |  |  |  | 48h |
| 55 | 1.3.1.3.10.1 | Review Client Feature Request/Revise Task Plan |  | 2d | 2007-03-02 | 2007-03-06 |  | 99.75d | 0d |  | Charles; Avinash; Satish | 48h |
| 56 | 1.3.1.4 | 3.2.1 Release Complete | milestone | 0d | 2007-03-06 | 2007-03-06 | 55 | 99.75d |  |  |  |  |
| 57 | 1.3.2 | **Iteration 2** |  | 39.75d | 2007-03-05 | 2007-04-27 |  | 8.25d |  |  |  | 452h |
| 58 | 1.3.2.1 | **SDK 4.0 Release** |  | 39.75d | 2007-03-05 | 2007-04-27 |  | 8.25d |  |  |  | 452h |
| 59 | 1.3.2.1.1 | **XMI Processor changes** |  | 33.75d | 2007-03-05 | 2007-04-19 |  | 4.5d |  |  |  | 328h |
| 60 | 1.3.2.1.1.1 | Detailed design of new code generation framework |  | 5d | 2007-03-09 | 2007-03-15 | 48 | 4.5d | 0d |  | Satish | 40h |
| 61 | 1.3.2.1.1.2 | Design Review/Update |  | 1d | 2007-03-16 | 2007-03-16 | 60 | 4.5d | 0d |  | Satish; Doug; Ye; Avinash | 32h |
| 62 | 1.3.2.1.1.3 | Implement new code generation framework |  | 3d | 2007-03-19 | 2007-03-21 | 61 | 4.5d | 0d |  | Satish | 24h |
| 63 | 1.3.2.1.1.4 | Rewrite bean generation for JDK 1.5 |  | 2d | 2007-03-22 | 2007-03-23 | 62 | 4.5d | 0d |  | Satish | 16h |
| 64 | 1.3.2.1.1.5 | Rewrite O/R mapping generation (.hbm.xml, .cfg.xml, ehcache.xml) |  | 10d | 2007-03-26 | 2007-04-06 | 63 | 4.5d | 0d |  | Satish | 80h |
| 65 | 1.3.2.1.1.6 | Implement class cache for JDK 1.5 |  | 4d | 2007-03-05 | 2007-03-09 | 49 | 28.25d | 0d |  | Dan | 32h |
| 66 | 1.3.2.1.1.7 | Rewrite XML schema generaotor |  | 2d | 2007-03-09 | 2007-03-13 | 65 | 28.25d | 0d |  | Dan | 16h |
| 67 | 1.3.2.1.1.8 | Rewrite XML mapping file generator |  | 2d | 2007-03-13 | 2007-03-15 | 66 | 28.25d | 0d |  | Dan | 16h |
| 68 | 1.3.2.1.1.9 | Supporting files generation (coreBeans.properties, DAOConfig.xml) |  | 5d | 2007-04-09 | 2007-04-13 | 64 | 4.5d | 0d |  | Satish | 40h |
| 69 | 1.3.2.1.1.10 | Change nestedCriteria to use JDK 1.5 beans |  | 2d | 2007-04-16 | 2007-04-17 | 65, 68 | 4.5d | 0d |  | Satish | 16h |
| 70 | 1.3.2.1.1.11 | Change CQL translator to use JDK 1.5 beans |  | 2d | 2007-04-18 | 2007-04-19 | 65, 69 | 4.5d | 0d |  | Satish | 16h |
| 71 | 1.3.2.1.2 | **QA** |  | 30d | 2007-03-16 | 2007-04-26 |  | 29.5d | 0d |  |  | 100h |
| 72 | 1.3.2.1.2.1 | Test Development |  | 5d | 2007-03-16 | 2007-03-22 | 60 | 86d |  | start no earlier than 2007-03-05 | Steve | 40h |
| 73 | 1.3.2.1.2.2 | Test Execution |  | 5d | 2007-04-20 | 2007-04-26 | 70 | 61d |  |  | Steve | 40h |
| 74 | 1.3.2.1.2.3 | Test Support |  | 2.5d | 2007-04-20 | 2007-04-24 | 70 | 4.5d |  |  | Satish | 20h |

| ID | WBS | Task | Type | Duration | Start | Finish | Predecessors | Total slack | Free slack | Constraint | Resources | Work |
| --- | --- | --- | --- | --- | --- | --- | --- | --- | --- | --- | --- | --- |
| 75 | 1.3.2.1.3 | **Iteration Plan** |  | 1d | 2007-04-27 | 2007-04-27 |  | 61d |  |  |  | 24h |
| 76 | 1.3.2.1.3.1 | Review Client Feature Request/Revise Task Plan |  | 1d | 2007-04-27 | 2007-04-27 | 71 | 61d |  |  | Charles; Avinash; Satish | 24h |
| 77 | 1.3.3 | **Iteration 3** |  | 33.75d | 2007-03-15 | 2007-05-01 | 67 | 26.75d |  |  |  | 80h |
| 78 | 1.3.3.1 | **Release 4.0 Beta 1** |  | 7d | 2007-03-15 | 2007-03-26 |  | 26.75d |  |  |  | 56h |
| 79 | 1.3.3.1.1 | **Use documentation in the Java docs (GF#1243) & Integrate JavaDocs in the web system** |  | 3.5d | 2007-03-15 | 2007-03-20 |  | 28.25d |  |  |  | 28h |
| 80 | 1.3.3.1.1.1 | Design |  | 0.5d | 2007-03-15 | 2007-03-15 | 40 | 28.25d | 0d |  | Dan | 4h |
| 81 | 1.3.3.1.1.2 | Development |  | 3d | 2007-03-15 | 2007-03-20 | 80 | 28.25d | 0d |  | Dan | 24h |
| 82 | 1.3.3.1.2 | **Improved logging/trace messages** |  | 2.5d | 2007-03-20 | 2007-03-23 |  | 26.75d | 0d |  |  | 20h |
| 83 | 1.3.3.1.2.1 | Development |  | 2.5d | 2007-03-20 | 2007-03-23 | 81 | 26.75d |  |  | Dan | 20h |
| 84 | 1.3.3.1.3 | Unrecognized database format for EA (GF#3955) |  | 0.5d | 2007-03-23 | 2007-03-23 | 82 | 85.75d | 0d |  | Dan | 4h |
| 85 | 1.3.3.1.4 | Build script change for downloading MySQL (GF#2933) |  | 0.5d | 2007-03-23 | 2007-03-26 | 84 | 85.75d |  |  | Dan | 4h |
| 86 | 1.3.3.2 | Release 4.0 Beta 1 Complete | milestone | 0d | 2007-05-01 | 2007-05-01 | 74, 82 | 0d |  | start no earlier than 2007-05-01 |  |  |
| 87 | 1.3.3.3 | Review Client Feature Request/Revise Task Plan |  | 1d | 2007-05-01 | 2007-05-01 | 86 | 59d |  |  | Charles; Avinash; Satish | 24h |
| 88 | 1.3.4 | **Iteration 5** |  | 21d? | 2007-05-01 | 2007-05-29 | 86 | 0d |  |  |  | 24h |
| 89 | 1.3.4.1 | Release 4.0 Beta 2 |  | 20d | 2007-05-01 | 2007-05-28 |  | 0d |  |  |  |  |
| 90 | 1.3.4.2 | Review Client Feature Request/Revise Task Plan |  | 1d? | 2007-05-29 | 2007-05-29 | 89 | 39d |  |  | Charles; Avinash; Satish | 24h |
| 91 | 1.3.5 | **Iteration 6** |  | 15d | 2007-05-29 | 2007-06-18 | 89 | 0d |  |  |  |  |
| 92 | 1.3.5.1 | Release 4.0 Final |  | 15d | 2007-05-29 | 2007-06-18 |  | 0d |  |  |  |  |
| 93 | 1.3.6 | Integration Test |  | 10d | 2007-06-19 | 2007-07-02 | 91 | 5d | 0d |  |  |  |
| 94 | 1.3.7 | UAT Test |  | 10d | 2007-07-03 | 2007-07-17 | 93 | 5d |  |  |  |  |
| 95 | 1.4 | **Transition** |  | 25d | 2007-06-19 | 2007-07-24 |  | 0d |  |  |  |  |
| 96 | 1.4.1 | **Documentation** |  | 25d | 2007-06-19 | 2007-07-24 | 91 | 0d |  |  |  |  |
| 97 | 1.4.1.1 | New users guide |  | 10d | 2007-06-19 | 2007-07-02 |  | 0d |  | start no earlier than 2007-06-15 |  |  |
| 98 | 1.4.1.2 | New technical guide |  | 10d | 2007-07-03 | 2007-07-17 | 97 | 0d |  | start no earlier than 2007-06-15 |  |  |
| 99 | 1.4.1.3 | How to example |  | 5d | 2007-07-18 | 2007-07-24 | 98 | 0d |  | start no earlier than 2007-06-15 |  |  |
| 100 | 1.4.2 | 4.0 Release Complete | milestone | 0d | 2007-07-24 | 2007-07-24 | 96 | 0d |  |  |  |  |
